# HRM Detail Plan

Schedule from MS Project, 2011-09-27 to 2012-05-01, status date 2012-03-09, A marks actual dates.

## Calendars

- HRM_hk1.0: Mon off; Tue 08:00-11:00, 13:00-16:00, 19:00-21:00; Wed 13:00-15:30; Thu 08:00-11:00, 13:00-16:00, 19:00-21:00; Fri 13:00-17:00; Sat 08:00-11:00, 13:00-15:30; Sun 13:00-17:00. Exceptions (off unless hours are given): 2011-10-31 08:00-12:00, 13:00-17:00.
- HRM_hk2.0: Mon off; Tue-Wed 08:00-11:00, 13:00-16:00, 19:00-21:00; Thu off; Fri-Sat 08:00-11:00, 13:00-16:00, 19:00-21:00; Sun 13:00-17:00.

## Resources

| Resource |
| --- |
| Nhung |
| Quyet |
| Nguyen |
| Loc |
| Dang |
| All |
| Tung |
| Tuong |
| Tan |
| 119 |

## Schedule

| ID | WBS | Task | Type | Duration | Start | Finish | Predecessors | Complete | Remaining | Baseline start | Baseline finish | Baseline duration | Baseline 1 start | Baseline 1 finish | Total slack | Free slack | Constraint | Resources | Work | Actual work |
| --- | --- | --- | --- | --- | --- | --- | --- | --- | --- | --- | --- | --- | --- | --- | --- | --- | --- | --- | --- | --- |
| 1 | 1 | **Human Resource Management** |  | 125.75d? | 2011-09-27 A | 2012-05-01 |  | 1% | 124.76d? | 2011-09-22 | 2012-04-30 | 222d? | 2011-09-26 | 2012-04-30 | 0d |  |  |  | 4411.7h | 28h |
| 2 | 1.1 | Kick off meeting | milestone | 0d | 2011-09-27 | 2011-09-27 |  |  |  |  |  |  | 2011-09-27 | 2011-09-27 | 57.25d | 0d | start no earlier than 2011-09-27 | All |  |  |
| 3 | 1.2 | **Project Management** |  | 68.5d? | 2011-09-27 A | 2012-01-21 | 2 |  | 68.5d? | 2011-10-01 | 2012-04-17 | 200d? | 2011-09-28 | 2012-04-30 | 57.25d |  |  |  | 317.75h |  |
| 4 | 1.2.1 | **Start Up** |  | 68.5d? | 2011-09-27 A | 2012-01-21 |  |  | 68.5d? | 2011-09-22 | 2012-04-17 | 209d? | 2011-09-28 | 2011-09-30 | 57.25d |  |  |  | 317.75h |  |
| 5 | 1.2.1.1 | **Research process** |  | 35.75d? | 2011-09-27 A | 2011-11-25 |  |  | 35.75d? | 2011-10-01 | 2012-03-22 | 174d | 2011-09-28 | 2011-09-29 | 87.94d |  |  |  | 132h |  |
| 6 | 1.2.1.1.1 | Requirement Process |  | 3d? | 2011-09-27 | 2011-10-01 |  |  |  |  |  |  | 2011-09-28 | 2011-09-29 | 120.19d | 0d | finish no earlier than 2011-10-01 | Nguyen [50%]; Quyet [50%] | 24h |  |
| 7 | 1.2.1.1.2 | Architect process |  | 3d? | 2011-09-27 A | 2011-10-01 | 6SS |  | 3d? |  |  |  | 2011-09-28 | 2011-09-29 | 120.19d | 0d | finish no earlier than 2011-10-01 | Tuong [50%]; Tan [50%] | 24h |  |
| 8 | 1.2.1.1.3 | Detail design process |  | 3d? | 2011-09-27 | 2011-10-01 | 6SS |  |  |  |  |  | 2011-09-28 | 2011-09-29 | 120.19d | 0d | finish no earlier than 2011-10-01 | Dang [50%]; Loc [50%] | 24h |  |
| 9 | 1.2.1.1.4 | Testing process |  | 3d? | 2011-09-27 | 2011-10-01 | 6SS |  |  |  |  |  | 2011-09-28 | 2011-09-28 | 106.81d | 0d | start no earlier than 2011-09-27 | Tung [50%] | 12h |  |
| 10 | 1.2.1.1.5 | Risk management |  | 3d? | 2011-09-27 | 2011-10-01 | 6SS |  |  |  |  |  | 2011-09-28 | 2011-09-28 | 109.06d | 26.5d | finish no earlier than 2011-10-01 | Nhung [50%] | 12h |  |
| 11 | 1.2.1.1.6 | Measurement management |  | 3d? | 2011-11-16 | 2011-11-22 | 10 |  |  |  |  |  | 2011-09-28 | 2011-09-28 | 82.56d | 0.75d | start no earlier than 2011-11-16 | Nhung | 24h |  |
| 12 | 1.2.1.1.7 | Change management |  | 1.5d? | 2011-11-23 | 2011-11-25 | 11 |  |  |  |  |  | 2011-09-28 | 2011-09-28 | 81.81d | 0.06d | start no earlier than 2011-11-23 | Nhung | 12h |  |
| 13 | 1.2.1.2 | **Develop Project Plan** |  | 62.25d? | 2011-10-01 | 2012-01-17 |  |  |  | 2011-09-22 | 2011-09-26 | 5d | 2011-09-28 | 2011-09-29 | 60d |  |  |  | 159.75h |  |
| 14 | 1.2.1.2.1 | Requirement Process |  | 4d? | 2011-10-02 | 2011-10-05 | 6 |  |  |  |  |  | 2011-09-28 | 2011-09-29 | 120.19d |  | start no earlier than 2011-10-02 | Nguyen [50%] | 16h |  |
| 15 | 1.2.1.2.2 | Architect process |  | 4d? | 2011-10-01 | 2011-10-05 | 7 |  |  |  |  |  | 2011-09-28 | 2011-09-29 | 120.19d |  |  | Tuong [50%]; Tan [50%] | 24h |  |
| 16 | 1.2.1.2.3 | Detail design process |  | 4d? | 2011-10-02 | 2011-10-05 | 8 |  |  |  |  |  | 2011-09-28 | 2011-09-29 | 120.19d |  | start no earlier than 2011-10-02 | Dang [50%]; Loc [50%] | 32h |  |
| 17 | 1.2.1.2.4 | Testing process |  | 2d? | 2011-10-04 | 2011-10-05 | 9 |  |  |  |  |  | 2011-09-28 | 2011-09-28 | 120.44d |  | finish no earlier than 2011-10-05 | Tung [50%] | 8h |  |
| 18 | 1.2.1.2.5 | Risk management |  | 1.94d? | 2011-11-26 | 2011-11-27 | 12 |  |  |  |  |  | 2011-09-28 | 2011-09-28 | 81.75d | 20.06d | start no earlier than 2011-11-26 | Nhung [50%] | 7.75h |  |
| 19 | 1.2.1.2.6 | Measurement management |  | 8d? | 2012-01-03 | 2012-01-10 | 18 |  |  |  |  |  | 2011-09-28 | 2011-09-28 | 61.69d | 3.25d | finish no earlier than 2012-01-10 | Nhung | 64h |  |
| 20 | 1.2.1.2.7 | Change management |  | 1d? | 2012-01-17 | 2012-01-17 | 19 |  |  |  |  |  | 2011-09-28 | 2011-09-28 | 58.44d | 0.5d | finish no earlier than 2012-01-17 | Nhung | 8h |  |
| 21 | 1.2.1.3 | Develop Detail Plan |  | 3.25d | 2012-01-18 | 2012-01-21 | 20 |  |  | 2011-09-22 | 2011-09-24 | 3d | 2011-09-28 | 2011-09-30 | 57.25d |  | finish no earlier than 2012-01-21 | Nhung | 26h |  |
| 22 | 1.3 | **Requirement Analysis** |  | 65.75d? | 2011-09-27 | 2012-01-17 | 2 |  |  | 2011-10-01 | 2011-11-20 | 51d? | 2011-10-01 | 2011-12-29 | 60d |  |  |  | 856.2h |  |
| 23 | 1.3.1 | Elicitate requirement |  | 2.81d? | 2011-09-27 | 2011-09-30 |  |  |  | 2011-10-01 | 2011-11-12 | 43d | 2011-10-01 | 2011-12-25 | 66.06d | 0d | start no earlier than 2011-09-27 | Dang [50%]; Loc [50%]; Nguyen [50%]; Nhung [50%]; Quyet [50%]; Tan [50%]; Tung [50%]; Tuong [50%] | 74h |  |
| 24 | 1.3.2 | Analysis requirement |  | 3d? | 2011-10-01 | 2011-10-06 | 23 |  |  | 2011-11-20 | 2011-11-20 | 0d? | 2011-10-01 | 2011-12-25 | 66.06d | 0.25d | finish no earlier than 2011-10-06 | Dang [50%]; Loc [50%]; Nguyen [50%]; Nhung [50%]; Quyet [50%]; Tan [50%]; Tung [50%]; Tuong [50%] | 96h |  |

| ID | WBS | Task | Type | Duration | Start | Finish | Predecessors | Baseline start | Baseline finish | Baseline duration | Baseline 1 start | Baseline 1 finish | Total slack | Free slack | Constraint | Resources | Work |
| --- | --- | --- | --- | --- | --- | --- | --- | --- | --- | --- | --- | --- | --- | --- | --- | --- | --- |
| 25 | 1.3.3 | **Develop Concept of Operation** |  | 25.06d? | 2011-10-01 | 2011-11-13 |  | 2011-10-08 | 2011-10-22 | 15d | 2011-10-01 | 2011-11-30 | 91.25d |  |  |  | 359.2h |
| 26 | 1.3.3.1 | **Document ConsOpt( Draft version)** |  | 13.12d? | 2011-10-01 | 2011-10-25 |  |  |  |  | 2011-10-01 | 2011-10-05 | 106.81d |  |  |  | 335.6h |
| 27 | 1.3.3.1.1 | Introduction |  | 8d? | 2011-10-07 | 2011-10-14 | 24 |  |  |  | 2011-10-01 | 2011-10-01 | 111.44d | 0d | finish no earlier than 2011-10-14 | Loc [50%] | 64h |
| 28 | 1.3.3.1.2 | Current system |  | 8d? | 2011-10-07 | 2011-10-14 |  |  |  |  | 2011-10-01 | 2011-10-01 | 109.75d | 0d | start no earlier than 2011-10-07 | Dang [50%] | 32h |
| 29 | 1.3.3.1.3 | Reason for improvement |  | 4d? | 2011-10-15 | 2011-10-18 | 28 |  |  |  | 2011-10-01 | 2011-10-01 | 109.75d | 0.25d | finish no earlier than 2011-10-18 | Dang [50%] | 16h |
| 30 | 1.3.3.1.4 | **System future** |  | 7.31d? | 2011-10-01 | 2011-10-14 |  |  |  |  | 2011-10-01 | 2011-10-05 | 104.19d | 0d |  |  | 72h |
| 31 | 1.3.3.1.4.1 | Information Catgegories |  | 6d? | 2011-10-07 | 2011-10-12 | 24 |  |  |  |  |  | 104d | 0d | finish no earlier than 2011-10-12 | Nhung | 48h |
| 32 | 1.3.3.1.4.2 | Processes |  | 1d? | 2011-10-13 | 2011-10-13 | 31 |  |  |  |  |  | 104.25d | 0.25d |  | Nhung | 8h |
| 33 | 1.3.3.1.4.3 | Processes: Mô hình phân rã chức năng hồ sơ nhân sự |  | 1d? | 2011-10-14 | 2011-10-14 | 32 |  |  |  |  |  | 104d |  |  | Nhung | 8h |
| 34 | 1.3.3.1.4.4 | Scenario |  | 2d? | 2011-10-01 | 2011-10-03 | 9 |  |  |  |  |  | 106.81d | 1.31d |  | Tung [50%] | 8h |
| 35 | 1.3.3.1.5 | Effect |  | 2d? | 2011-10-15 | 2011-10-16 | 27 |  |  |  | 2011-10-01 | 2011-10-01 | 111.5d | 2.31d | finish no earlier than 2011-10-16 | Loc [10%] | 1.6h |
| 36 | 1.3.3.1.6 | Analysis system future |  | 18.75d? | 2011-10-07 | 2011-10-25 | 24 |  |  |  | 2011-10-01 | 2011-10-01 | 109d |  |  | Quyet [20%] | 150h |
| 37 | 1.3.3.2 | Review |  | 9.5d? | 2011-10-15 | 2011-11-01 | 30 |  |  |  |  |  | 104.19d |  | finish no earlier than 2011-10-18 | All [10%] | 7.6h |
| 38 | 1.3.3.3 | Send Concept Operation to customer | milestone | 0d | 2011-11-10 | 2011-11-10 |  |  |  |  | 2011-11-10 | 2011-11-10 | 68.44d | 0d | start no earlier than 2011-11-10 | Nhung |  |
| 39 | 1.3.3.4 | **Update ConsOpt** |  | 2.25d? | 2011-11-10 | 2011-11-13 |  |  |  |  | 2011-11-21 | 2011-11-30 | 68.44d |  |  |  | 16h |
| 40 | 1.3.3.4.1 | Update Information Catgegories |  | 2d? | 2011-11-10 | 2011-11-13 | 38 |  |  |  |  |  | 97.19d |  |  | Quyet [50%] | 8h |
| 41 | 1.3.3.4.2 | Update Processes |  | 2d? | 2011-11-10 | 2011-11-13 | 38 |  |  |  |  |  | 68.44d | 8.44d |  | Nhung [50%] | 8h |
| 42 | 1.3.4 | **Develop SRS** |  | 60.44d? | 2011-10-06 | 2012-01-17 |  | 2011-10-23 | 2011-11-20 | 29d | 2011-10-01 | 2011-10-04 | 60d |  |  |  | 327h |
| 43 | 1.3.4.1 | **Document Software Requirement Specification (Draft version)** |  | 51.69d? | 2011-10-06 | 2012-01-01 |  |  |  |  | 2011-10-01 | 2011-10-03 | 68.75d |  |  |  | 186h |
| 44 | 1.3.4.1.1 | **Develop use case specification** |  | 11d? | 2011-10-06 | 2011-10-25 |  |  |  |  | 2011-10-01 | 2011-10-03 | 106.5d |  |  |  | 46h |
| 45 | 1.3.4.1.1.1 | Draw use cases |  | 2.75d? | 2011-10-19 | 2011-10-23 | 29 |  |  |  |  |  | 109.75d |  | finish no earlier than 2011-10-23 | Dang | 22h |
| 46 | 1.3.4.1.1.2 | Draw activity diagram for use cases |  | 2d? | 2011-10-21 | 2011-10-25 | 35 |  |  |  |  |  | 109.44d |  | start no earlier than 2011-10-21 | Loc | 16h |
| 47 | 1.3.4.1.1.3 | Descripe use case |  | 1d? | 2011-10-06 | 2011-10-07 | 34 |  |  |  |  |  | 106.25d | 0d | start no earlier than 2011-10-06 | Tung | 8h |
| 48 | 1.3.4.1.2 | Develop interfaces |  | 17.5d? | 2011-11-29 | 2012-01-01 | 41 |  |  |  | 2011-10-01 | 2011-10-02 | 60d | 0d | start no earlier than 2011-11-29 | Nhung | 140h |
| 49 | 1.3.4.2 | Review |  | 8d? | 2011-10-07 | 2011-10-23 | 47 |  |  |  | 2011-10-01 | 2011-10-01 | 106.25d | 0d |  | All | 64h |
| 50 | 1.3.4.3 | Update SRS |  | 1d? | 2011-10-23 | 2011-10-25 | 49 |  |  |  |  |  | 106.5d | 1.75d |  | Loc | 8h |
| 51 | 1.3.4.4 | Software Requirement Specification (Final version) |  | 4.75d? | 2011-10-28 | 2011-11-01 | 50 |  |  |  |  |  | 104d |  | finish no earlier than 2011-11-01 | Dang | 38h |
| 52 | 1.3.4.5 | Upadate interfaces |  | 7.75d? | 2012-01-03 | 2012-01-17 | 48 |  |  |  |  |  | 60d |  | finish no earlier than 2012-01-17 | Dang [50%] | 31h |

| ID | WBS | Task | Type | Duration | Start | Finish | Predecessors | Complete | Remaining | Baseline start | Baseline finish | Baseline duration | Baseline 1 start | Baseline 1 finish | Total slack | Free slack | Constraint | Resources | Work | Actual work |
| --- | --- | --- | --- | --- | --- | --- | --- | --- | --- | --- | --- | --- | --- | --- | --- | --- | --- | --- | --- | --- |
| 53 | 1.4 | **Architect Design Analysis** |  | 50.19d? | 2011-10-07 | 2011-12-31 |  |  |  | 2011-10-24 | 2011-12-25 | 63d? | 2011-10-15 | 2011-12-29 | 61.25d |  |  |  | 564.5h |  |
| 54 | 1.4.1 | **Develop architecture driver document (ADD)** |  | 20d? | 2011-10-07 | 2011-11-09 |  |  |  | 2011-12-25 | 2011-12-25 | 0d? | 2011-10-15 | 2011-12-25 | 61.5d |  |  |  | 141.5h |  |
| 55 | 1.4.1.1 | Discover architecture drivers |  | 8.69d | 2011-10-07 | 2011-10-23 | 24 |  |  | 2011-10-24 | 2011-11-03 | 11d | 2011-10-15 | 2011-10-17 | 66.06d | 5d | finish no earlier than 2011-10-23 | Tan [50%]; Tuong [50%] | 69.5h |  |
| 56 | 1.4.1.2 | Document ADD(Draft version) | milestone | 0d | 2011-10-31 | 2011-10-31 | 55 |  |  | 2011-11-04 | 2011-11-05 | 2d | 2011-10-17 | 2011-10-22 | 61.31d | 0d | finish no earlier than 2011-10-31 | Tan [50%]; Tuong [50%] |  |  |
| 57 | 1.4.1.3 | Review | milestone | 0d | 2011-10-31 | 2011-10-31 | 56 |  |  | 2011-11-06 | 2011-11-06 | 1d | 2011-10-22 | 2011-10-24 | 61.31d | 0d | finish no earlier than 2011-10-27 | Tan [50%]; Tuong [50%] |  |  |
| 58 | 1.4.1.4 | Document ADD(Final version) |  | 9d? | 2011-11-01 | 2011-11-09 | 57 |  |  |  |  |  |  |  | 61.31d | 0d | finish no earlier than 2011-11-05 | Tan [50%]; Tuong [50%] | 72h |  |
| 59 | 1.4.2 | **Develop architecture design** |  | 30.19d | 2011-11-10 | 2011-12-31 |  |  |  | 2011-11-13 | 2011-11-13 | 1d | 2011-10-23 | 2011-12-29 | 61.25d |  |  |  | 423h |  |
| 60 | 1.4.2.1 | Research about new pattern |  | 6.25d | 2011-11-10 | 2011-11-22 | 58 |  |  | 2011-11-14 | 2011-12-05 | 22d | 2011-10-23 | 2011-11-01 | 61.5d | 0d | finish no earlier than 2011-11-13 | Tan; Tuong | 100h |  |
| 61 | 1.4.2.2 | Document AD (Draft version) |  | 3.5d | 2011-11-22 | 2011-11-29 | 60 |  |  | 2011-12-06 | 2011-12-06 | 1d | 2011-11-02 | 2011-11-16 | 61.5d | 0d | finish no earlier than 2011-11-13 | Tan; Tuong | 56h |  |
| 62 | 1.4.2.3 | Review |  | 3.5d | 2011-11-29 | 2011-12-06 | 61 |  |  | 2011-12-07 | 2011-12-10 | 4d | 2011-11-16 | 2011-11-18 | 61.5d | 0d | finish no earlier than 2011-11-20 | Tan; Tuong | 56h |  |
| 63 | 1.4.2.4 | Document AD (Final version) |  | 13.19d | 2011-12-06 | 2011-12-31 | 62 |  |  | 2011-12-12 | 2011-12-13 | 2d | 2011-12-19 | 2011-12-24 | 61.25d | 0d | finish no earlier than 2011-12-31 | Tan; Tuong | 211h |  |
| 64 | 1.5 | **Detail Design Analysis** |  | 40d | 2011-12-25 | 2012-03-03 |  |  |  | 2011-10-16 | 2012-03-04 | 141d? | 2011-12-30 | 2012-02-25 | 33.25d |  |  |  | 572h |  |
| 65 | 1.5.1 | Design Database |  | 7d | 2012-01-01 | 2012-01-14 | 63 |  |  | 2011-12-14 | 2011-12-24 | 11d | 2011-11-17 | 2011-12-29 | 61.25d |  | start no earlier than 2011-11-17 | Tuong | 56h |  |
| 66 | 1.5.2 | **Analysis** |  | 20.5d | 2011-12-25 | 2012-01-29 |  |  |  | 2012-03-04 | 2012-03-04 | 0d? | 2011-12-30 | 2012-01-11 | 36.5d |  |  |  | 288h |  |
| 67 | 1.5.2.1 | Design class diagram |  | 9d | 2011-12-25 | 2012-01-12 |  |  |  | 2011-12-25 | 2012-01-02 | 9d | 2011-12-30 | 2012-01-07 | 36.5d | 0d | start no earlier than 2011-12-25 | Dang; Loc | 144h |  |
| 68 | 1.5.2.2 | Design sequence diagram |  | 9d | 2012-01-12 | 2012-01-29 | 67 |  |  | 2012-01-03 | 2012-01-11 | 9d | 2012-01-03 | 2012-01-11 | 36.5d | 0d | start no earlier than 2012-01-03 | Dang; Loc | 144h |  |
| 69 | 1.5.3 | **SDS(Draft version)** |  | 15d | 2012-01-31 | 2012-02-25 |  |  |  | 2012-01-12 | 2012-01-20 | 9d | 2012-01-21 | 2012-02-07 | 36.5d |  |  |  | 208h |  |
| 70 | 1.5.3.1 | Class diagram |  | 9d | 2012-01-31 | 2012-02-17 | 68 |  |  | 2012-01-21 | 2012-01-29 | 9d | 2012-01-21 | 2012-01-29 | 36.5d | 0d | finish no earlier than 2012-02-01 | Dang; Loc | 144h |  |
| 71 | 1.5.3.2 | Sequence diagram |  | 4d | 2012-02-17 | 2012-02-25 | 70 |  |  | 2012-01-30 | 2012-02-07 | 9d | 2012-01-30 | 2012-02-07 | 36.5d | 0.5d | start no earlier than 2012-02-17 | Dang; Loc | 64h |  |
| 72 | 1.5.4 | Review |  | 1.25d | 2012-02-26 | 2012-02-28 | 71 |  |  | 2012-02-08 | 2012-02-16 | 9d | 2012-02-08 | 2012-02-16 | 36d | 2.75d | finish no earlier than 2012-02-28 | Dang; Loc | 20h |  |
| 73 | 1.5.5 | SDS(Final version) | milestone | 0d | 2012-03-03 | 2012-03-03 | 72 |  |  | 2012-02-17 | 2012-02-25 | 9d | 2012-02-17 | 2012-02-25 | 33.25d |  | finish no earlier than 2012-03-03 | Dang; Loc |  |  |
| 74 | 1.6 | **Programming** |  | 92.75d? | 2011-11-10 A | 2012-04-20 |  | 2% | 90.86d? | 2012-03-04 | 2012-04-04 | 32d? | 2012-02-20 | 2012-03-14 | 6.44d |  |  |  | 1150.75h | 28h |
| 75 | 1.6.1 | **Training** |  | 92.75d? | 2011-11-10 A | 2012-04-20 |  | 2% | 90.86d? | 2012-03-04 | 2012-03-04 | 0d? | 2011-11-28 | 2011-12-29 | 6.44d |  |  |  | 1150.75h | 28h |
| 76 | 1.6.1.1 | ID generate |  | 18d? | 2011-11-10 | 2011-12-15 |  |  |  | 2012-04-04 | 2012-04-04 | 0d? | 2011-11-28 | 2011-12-15 | 78.69d |  | finish no earlier than 2011-12-15 | All | 144h |  |
| 77 | 1.6.1.2 | Programming: Manage Catalog |  | 7.5d? | 2012-01-07 | 2012-01-14 |  |  |  |  |  |  |  |  | 61.19d |  | finish no earlier than 2012-01-14 | Tan | 60h |  |

| ID | WBS | Task | Duration | Start | Finish | Predecessors | Complete | Remaining | Total slack | Free slack | Constraint | Calendar | Resources | Work | Actual work |
| --- | --- | --- | --- | --- | --- | --- | --- | --- | --- | --- | --- | --- | --- | --- | --- |
| 78 | 1.6.1.3 | **Programming** | 32.81d? | 2012-02-29 A | 2012-04-20 |  | 2% | 32.03d? | 7.44d |  |  | HRM_hk2.0 |  | 946.75h | 28h |
| 79 | 1.6.1.3.1 | **Programming: Quản lý nhân lực** | 32.81d? | 2012-02-29 A | 2012-04-20 |  | 3% | 31.95d? | 7.44d |  |  | HRM_hk2.0 |  | 755.25h | 28h |
| 80 | 1.6.1.3.1.1 | **Programming: Overview Information** | 29.31d? | 2012-03-06 A | 2012-04-20 |  |  | 29.31d? | 7.44d |  |  | HRM_hk2.0 |  | 232.25h |  |
| 81 | 1.6.1.3.1.1.1 | Programming: Employee | 14d? | 2012-03-06 A | 2012-04-01 |  |  | 14d? | 18.75d |  | finish no earlier than 2012-04-01 | HRM_hk2.0 | Tan [50%] | 56h |  |
| 82 | 1.6.1.3.1.1.2 | Programming: Staff History | 4d? | 2012-03-21 | 2012-03-28 | 91 |  |  | 21.75d |  | start no earlier than 2012-03-21 | HRM_hk2.0 | Nguyen | 32h |  |
| 83 | 1.6.1.3.1.1.3 | Programming: Family Relationship Management | 3.5d? | 2012-03-06 A | 2012-03-11 |  |  | 3.5d? | 21.5d | 0d | finish no earlier than 2012-03-12 | HRM_hk2.0 | Nhung | 28h |  |
| 84 | 1.6.1.3.1.1.4 | Programming: Supported People Management | 3.5d? | 2012-03-06 A | 2012-03-11 |  |  | 3.5d? | 22.25d | 0d | finish no earlier than 2012-03-12 | HRM_hk2.0 | Nguyen | 28h |  |
| 85 | 1.6.1.3.1.1.5 | Programming: Certificate Management | 22.06d? | 2012-03-07 | 2012-04-20 | 117 |  |  | 7.44d |  | finish no earlier than 2012-04-12 | HRM_hk2.0 | Tan [50%] | 88.25h |  |
| 86 | 1.6.1.3.1.2 | **Programming: Expand Information** | 18.75d? | 2012-02-29 A | 2012-03-28 |  | 4% | 17.98d? | 21.5d |  |  | HRM_hk2.0 |  | 523h | 28h |
| 87 | 1.6.1.3.1.2.1 | **Programming: Quản lý đào tạo** | 10.75d? | 2012-03-13 | 2012-03-28 |  |  |  | 21.5d |  |  | HRM_hk2.0 |  | 67h |  |
| 88 | 1.6.1.3.1.2.1.1 | **Programming: Quản lý đào tạo bên ngoài** | 10.75d? | 2012-03-13 | 2012-03-28 |  |  |  | 21.5d |  |  | HRM_hk2.0 |  | 51h |  |
| 89 | 1.6.1.3.1.2.1.1.1 | Programming: Traning Course Information | 4.25d? | 2012-03-13 | 2012-03-20 | 83 |  |  | 21.5d | 0.25d | finish no earlier than 2012-03-20 | HRM_hk2.0 | Nhung [50%] | 17h |  |
| 90 | 1.6.1.3.1.2.1.1.2 | Programming: Training Result Information | 4.25d? | 2012-03-21 | 2012-03-28 | 100 |  |  | 21.5d |  | finish no earlier than 2012-03-28 | HRM_hk2.0 | Quyet | 34h |  |
| 91 | 1.6.1.3.1.2.1.2 | Programming: Quản lý đào tạo nội bộ | 4d? | 2012-03-13 | 2012-03-20 | 84 |  |  | 22.25d | 0.5d | finish no earlier than 2012-03-19 | HRM_hk2.0 | Nguyen [50%] | 16h |  |
| 92 | 1.6.1.3.1.2.2 | **Programming: Quản lý quá trình công tác** | 5.25d? | 2012-03-21 | 2012-03-28 |  |  |  | 21.5d |  |  | HRM_hk2.0 |  | 64h |  |
| 93 | 1.6.1.3.1.2.2.1 | Programming: Task Management | 4.25d? | 2012-03-21 | 2012-03-28 | 89 |  |  | 21.5d |  | finish no earlier than 2012-03-28 | HRM_hk2.0 | Nhung | 34h |  |
| 94 | 1.6.1.3.1.2.2.2 | Programming: Appoint Management | 3.75d? | 2012-03-21 | 2012-03-28 | 101 |  |  | 22d |  | start no earlier than 2012-03-21 | HRM_hk2.0 | Loc | 30h |  |
| 95 | 1.6.1.3.1.2.3 | **Programming: Hoạt động khoa học - Công nghệ** | 9.5d? | 2012-03-06 A | 2012-03-20 |  |  | 9.5d? | 27.25d |  |  | HRM_hk2.0 |  | 132h |  |
| 96 | 1.6.1.3.1.2.3.1 | Programming: Subject Management | 3.5d? | 2012-03-06 A | 2012-03-11 |  |  | 3.5d? | 21.75d | 0d | start no earlier than 2012-03-06 | HRM_hk2.0 | Dang | 28h |  |
| 97 | 1.6.1.3.1.2.3.2 | Programming: Article Management | 3.5d? | 2012-03-06 A | 2012-03-11 |  |  | 3.5d? | 21.75d | 0d | start no earlier than 2012-03-06 | HRM_hk2.0 | Quyet | 28h |  |
| 98 | 1.6.1.3.1.2.3.3 | Programming: Syllabus Management | 3.5d? | 2012-03-06 A | 2012-03-11 |  |  | 3.5d? | 22.5d | 0d | start no earlier than 2012-03-06 | HRM_hk2.0 | Loc | 28h |  |
| 99 | 1.6.1.3.1.2.3.4 | Programming: Product Management | 4d? | 2012-03-13 | 2012-03-20 | 97 |  |  | 27.25d |  | finish no earlier than 2012-03-19 | HRM_hk2.0 | Quyet [50%] | 16h |  |
| 100 | 1.6.1.3.1.2.3.5 | Programming: Master Thesis Guideline | 4d? | 2012-03-13 | 2012-03-20 | 97 |  |  | 22d | 0.5d | finish no earlier than 2012-03-19 | HRM_hk2.0 | Quyet [50%] | 16h |  |
| 101 | 1.6.1.3.1.2.3.6 | Programming: Science Research Guideline Of Student | 4d? | 2012-03-13 | 2012-03-20 | 98 |  |  | 22.5d | 0.5d | finish no earlier than 2012-03-19 | HRM_hk2.0 | Loc [50%] | 16h |  |

| ID | WBS | Task | Type | Duration | Start | Finish | Predecessors | Complete | Remaining | Total slack | Free slack | Constraint | Calendar | Resources | Work | Actual work |
| --- | --- | --- | --- | --- | --- | --- | --- | --- | --- | --- | --- | --- | --- | --- | --- | --- |
| 102 | 1.6.1.3.1.2.4 | **Programming: Khen thưởng - Kỷ luật - Danh hiệu thi đua** |  | 5d? | 2012-03-13 | 2012-03-20 |  |  |  | 22d |  |  | HRM_hk2.0 |  | 48h |  |
| 103 | 1.6.1.3.1.2.4.1 | Programming: RewardManagement |  | 4d? | 2012-03-13 | 2012-03-20 | 113 |  |  | 22d | 0.5d | finish no earlier than 2012-03-19 | HRM_hk2.0 | Tuong [50%] | 16h |  |
| 104 | 1.6.1.3.1.2.4.2 | Programming: Penalty Management |  | 4d? | 2012-03-13 | 2012-03-20 | 113 |  |  | 27.25d |  | finish no earlier than 2012-03-19 | HRM_hk2.0 | Tuong [50%] | 16h |  |
| 105 | 1.6.1.3.1.2.4.3 | Programming: Awarded Title Management |  | 4d? | 2012-03-13 | 2012-03-20 | 84 |  |  | 27.25d |  | finish no earlier than 2012-03-19 | HRM_hk2.0 | Nguyen [50%] | 16h |  |
| 106 | 1.6.1.3.1.2.5 | **Programming: Quản lý tập sự/Thử việc** |  | 5.25d? | 2012-03-13 | 2012-03-20 |  |  |  | 27d |  |  | HRM_hk2.0 |  | 34h |  |
| 107 | 1.6.1.3.1.2.5.1 | Programming: Lecturer Probation Management |  | 4.25d? | 2012-03-13 | 2012-03-20 | 83 |  |  | 27d |  | finish no earlier than 2012-03-20 | HRM_hk2.0 | Nhung [50%] | 17h |  |
| 108 | 1.6.1.3.1.2.5.2 | Programming: Staff Internship Management |  | 4.25d? | 2012-03-13 | 2012-03-20 | 98 |  |  | 27d |  | finish no earlier than 2012-03-20 | HRM_hk2.0 | Loc [50%] | 17h |  |
| 109 | 1.6.1.3.1.2.6 | Programming: Income Management |  | 4.25d? | 2012-03-21 | 2012-03-28 | 111 |  |  | 21.5d |  | finish no earlier than 2012-03-28 | HRM_hk2.0 | Dang | 34h |  |
| 110 | 1.6.1.3.1.2.7 | Programming: Professor Position Management |  | 4.25d? | 2012-03-21 | 2012-03-28 | 103 |  |  | 21.5d |  | start no earlier than 2012-03-21 | HRM_hk2.0 | Tuong | 34h |  |
| 111 | 1.6.1.3.1.2.8 | Programming: Facilitate Management |  | 4d? | 2012-03-13 | 2012-03-20 | 96 |  |  | 22d | 0.5d | finish no earlier than 2012-03-19 | HRM_hk2.0 | Dang | 32h |  |
| 112 | 1.6.1.3.1.2.9 | **Programming: Quản lý công tác Đoàn Thể** |  | 12.5d? | 2012-02-29 A | 2012-03-19 |  | 36% | 8.01d? | 17.25d |  |  | HRM_hk2.0 |  | 78h | 28h |
| 113 | 1.6.1.3.1.2.9.1 | Programming: Communist Party Management |  | 6.25d? | 2012-02-29 | 2012-03-11 |  |  |  | 21.75d | 0d | start no earlier than 2012-02-29 | HRM_hk2.0 | Tuong | 50h |  |
| 114 | 1.6.1.3.1.2.9.2 | Programming: Union Management |  | 1.5d? | 2012-03-06 A | 2012-03-08 A |  | 100% |  |  |  | start no earlier than 2012-03-06 | HRM_hk2.0 | Tung | 12h | 12h |
| 115 | 1.6.1.3.1.2.9.3 | Programming: Trade Union Management |  | 2d? | 2012-03-08 A | 2012-03-19 A | 114 | 100% |  |  |  | finish no earlier than 2012-03-19 | HRM_hk2.0 | Tung | 16h | 16h |
| 116 | 1.6.1.3.2 | **Programming: Quản trị hệ thống** |  | 2.19d? | 2012-03-03 | 2012-03-06 |  |  |  | 7.44d |  |  | HRM_hk2.0 |  | 15.5h |  |
| 117 | 1.6.1.3.2.1 | Programming: Employee Code Setting |  | 1.94d? | 2012-03-03 | 2012-03-06 |  |  |  | 7.44d | 0.25d | finish no earlier than 2012-03-06 | HRM_hk2.0 | Tan | 15.5h |  |
| 118 | 1.6.1.3.3 | PROGRAMMING: Report |  | 8.5d? | 2012-04-03 | 2012-04-15 |  |  |  | 9.75d |  | finish no earlier than 2012-04-15 | HRM_hk2.0 |  |  |  |
| 119 | 1.6.1.3.4 | Conduct Unit testing |  | 1.25d? | 2012-04-01 | 2012-04-03 |  |  |  | 0.5d | 0.25d | finish no earlier than 2012-04-03 | HRM_hk2.0 | Dang; Loc; Nguyen; Nhung; Quyet; Tan; Tung; Tuong | 80h |  |
| 120 | 1.6.1.3.5 | Intergration |  | 1.5d? | 2012-04-04 | 2012-04-06 | 119 |  |  | 0.5d | 0d | finish no earlier than 2012-04-06 | HRM_hk2.0 | Dang; Loc; Nguyen; Nhung; Quyet; Tan; Tung; Tuong | 96h |  |
| 121 | 1.7 | **Testing** |  | 20.81d? | 2012-03-11 | 2012-04-13 |  |  |  | 11.94d |  |  | HRM_hk2.0 |  | 358.5h |  |
| 122 | 1.7.1 | **Design test case** |  | 20.81d? | 2012-03-11 | 2012-04-13 |  |  |  | 11.94d |  |  | HRM_hk2.0 |  | 182.5h |  |
| 123 | 1.7.1.1 | Acceptance test case |  | 4d? | 2012-03-11 | 2012-03-18 |  |  |  | 11.94d | 0d | finish no earlier than 2012-03-18 | HRM_hk2.0 | Tung | 32h |  |
| 124 | 1.7.1.2 | System test case |  | 10.62d? | 2012-03-20 | 2012-04-10 | 123 |  |  | 12.19d | 0d | finish no earlier than 2012-03-14 | HRM_hk2.0 | Tung [50%] | 42.5h |  |
| 125 | 1.7.1.3 | Integration test case |  | 1.69d? | 2012-04-10 | 2012-04-13 | 124 |  |  | 11.94d | 0d | finish no earlier than 2012-04-01 | HRM_hk2.0 | Dang; Loc; Nguyen; Nhung; Quyet; Tan; Tung; Tuong | 108h |  |
| 126 | 1.7.1.4 | Unit test case | milestone | 0d? | 2012-04-13 | 2012-04-13 | 125 |  |  | 11.94d |  | finish no earlier than 2012-03-29 | HRM_hk2.0 | Dang; Loc; Nguyen; Nhung; Quyet; Tan; Tung; Tuong |  |  |

| ID | WBS | Task | Duration | Start | Finish | Predecessors | Total slack | Free slack | Constraint | Calendar | Resources | Work |
| --- | --- | --- | --- | --- | --- | --- | --- | --- | --- | --- | --- | --- |
| 127 | 1.7.2 | **Conduct test case** | 3.25d? | 2012-04-07 | 2012-04-11 |  | 0.5d |  |  | HRM_hk2.0 |  | 176h |
| 128 | 1.7.2.1 | Integration test case | 1.25d? | 2012-04-07 | 2012-04-08 | 120 | 0.5d | 0d | finish no earlier than 2012-04-08 | HRM_hk2.0 | Dang; Loc; Nguyen; Nhung; Quyet; Tan; Tung; Tuong | 80h |
| 129 | 1.7.2.2 | System test case | 0.75d? | 2012-04-10 | 2012-04-10 | 128 | 0.5d | 0.25d | finish no earlier than 2012-03-06 | HRM_hk2.0 | Dang; Loc; Nguyen; Nhung; Quyet; Tan; Tung; Tuong | 48h |
| 130 | 1.7.2.3 | Acceptance test case | 0.75d? | 2012-04-11 | 2012-04-11 | 129 | 0.5d |  | finish no earlier than 2012-03-06 | HRM_hk2.0 | Dang; Loc; Nguyen; Nhung; Quyet; Tan; Tung; Tuong | 48h |
| 131 | 1.8 | Rework | 4.25d? | 2012-04-13 | 2012-04-20 | 130 | 0.5d | 0d | finish no earlier than 2012-04-20 | HRM_hk2.0 | Dang; Loc; Nguyen; Nhung; Quyet; Tan; Tung; Tuong | 272h |
| 132 | 1.9 | Deployment | 1.31d? | 2012-04-21 | 2012-04-24 | 131 | 0.5d |  | finish no earlier than 2012-03-07 | HRM_hk2.0 | Dang; Loc; Nguyen; Nhung; Quyet; Tan; Tung; Tuong | 84h |
| 133 | 1.10 | Deliver to customer | 2.94d? | 2012-04-24 | 2012-04-30 | 132 | 0d |  | finish no earlier than 2012-04-30 | HRM_hk2.0 | Dang; Loc; Nguyen; Nhung; Quyet; Tan; Tung; Tuong | 188h |
| 134 | 1.11 | Maintaining | 0.75d? | 2012-05-01 | 2012-05-01 | 133 | 0d |  | finish no earlier than 2012-03-06 | HRM_hk2.0 | Dang; Loc; Nguyen; Nhung; Quyet; Tan; Tung; Tuong | 48h |
